# PlanificacionTareas

Schedule from MS Project, 2024-04-30 to 2024-06-10, costs in $.

## Calendars

- Standard: Mon-Fri 08:00-12:00, 13:00-17:00; Sat-Sun off.

## Resources

| Resource | Rate | Cost per use |
| --- | --- | --- |
| Diseñador gráfico | 29000 |  |
| Tester | 30000 |  |
| Programador backend 1 | 45000 |  |
| Analista | 33500 |  |
| Programador frontend 1 | 43000 |  |
| Capacitador | 18500 |  |
| Técnico | 17000 |  |
| Programador backend 2 | 45000 |  |
| Programador frontend 2 | 43000 |  |
| Ingeniero en Sistemas |  | 1200000 |

## Schedule

| ID | WBS | Task | Type | Duration | Start | Finish | Predecessors | Total slack | Free slack | Resources | Work | Cost |
| --- | --- | --- | --- | --- | --- | --- | --- | --- | --- | --- | --- | --- |
| 1 | 1 | **Desarrollo e implementación del Sistema de Información** |  | 29.25d | 2024-04-30 | 2024-06-10 |  | 0d |  | Ingeniero en Sistemas | 594h | 16,134,832.92 |
| 2 | 1.1 | **Investigación preliminar** |  | 1.75d | 2024-04-30 | 2024-05-01 |  | 0d |  |  | 14h | 469,000 |
| 3 | 1.1.1 | Preparar preguntas de la entrevista |  | 0.25d | 2024-04-30 | 2024-04-30 |  | 0d |  | Analista | 2h | 67,000 |
| 4 | 1.1.2 | Entrevistar a la dueña del kiosko |  | 0.25d | 2024-04-30 | 2024-04-30 | 3 | 0d |  | Analista | 2h | 67,000 |
| 5 | 1.1.3 | Evaluar y actualzar el hardware existente |  | 0.75d | 2024-04-30 | 2024-05-01 | 4 | 0d |  | Analista | 6h | 201,000 |
| 6 | 1.1.4 | Redactar informe |  | 0.5d | 2024-05-01 | 2024-05-01 | 5 | 0d |  | Analista | 4h | 134,000 |
| 7 | 1.1.5 | Informe aprobado | milestone | 0d | 2024-05-01 | 2024-05-01 | 6 | 0d |  |  |  |  |
| 8 | 1.2 | **Análisis del sistema** |  | 4d | 2024-05-01 | 2024-05-07 |  | 0d |  |  | 32h | 1,072,000 |
| 9 | 1.2.1 | **Realización de la ERS** |  | 1d | 2024-05-01 | 2024-05-02 |  | 0d |  |  | 8h | 268,000 |
| 10 | 1.2.1.1 | Realizar requisitos funcionales |  | 0.75d | 2024-05-01 | 2024-05-02 | 7 | 0d |  | Analista | 6h | 201,000 |
| 11 | 1.2.1.2 | Realizar requisitos no funcionales |  | 0.25d | 2024-05-02 | 2024-05-02 | 10 | 0d |  | Analista | 2h | 67,000 |
| 12 | 1.2.1.3 | ERS completada | milestone | 0d | 2024-05-02 | 2024-05-02 | 11 | 0d |  | Analista |  |  |
| 13 | 1.2.2 | Realizar el modelo de clases |  | 1d | 2024-05-02 | 2024-05-03 | 12 | 0d |  | Analista | 8h | 268,000 |
| 14 | 1.2.3 | Realizar el modelo de casos de uso |  | 2d | 2024-05-03 | 2024-05-07 | 13 | 0d |  | Analista | 16h | 536,000 |
| 15 | 1.2.4 | Análisis completado | milestone | 0d | 2024-05-07 | 2024-05-07 | 14 | 0d |  |  |  |  |
| 16 | 1.3 | **Realización del módulo de inventario** |  | 2.75d | 2024-05-03 | 2024-05-08 |  | 2d |  |  | 34h | 1,510,000 |
| 17 | 1.3.1 | Realizar base de datos del stock |  | 2.75d | 2024-05-03 | 2024-05-08 | 13 | 7.5d | 0d | Programador backend 1 | 22h | 990,000 |
| 18 | 1.3.2 | Realizar interfaz de carga de nuevo producto |  | 0.5d | 2024-05-07 | 2024-05-08 | 15 | 7.5d | 0d | Programador frontend 1 | 4h | 172,000 |
| 19 | 1.3.3 | Realizar interfaz de ingreso y egreso de productos |  | 0.5d | 2024-05-07 | 2024-05-08 | 15 | 7.5d | 0d | Programador frontend 2 | 4h | 172,000 |
| 20 | 1.3.4 | Realizar la lógica del resumen de faltantes |  | 0.25d | 2024-05-07 | 2024-05-07 | 15 | 0d |  | Programador backend 2 | 2h | 90,000 |
| 21 | 1.3.5 | Integrar el modulo de inventario |  | 0.25d | 2024-05-08 | 2024-05-08 | 18, 19 | 7.5d | 0d | Programador frontend 1 | 2h | 86,000 |
| 22 | 1.3.6 | Módulo del inventario completado | milestone | 0d | 2024-05-08 | 2024-05-08 | 21, 17, 20 | 7.5d | 0d |  |  |  |
| 23 | 1.4 | **Realización del módulo de ventas** |  | 1.25d | 2024-05-08 | 2024-05-09 |  | 7.5d |  |  | 20h | 868,000 |
| 24 | 1.4.1 | Realizar interfaz de consulta de precios |  | 1d | 2024-05-08 | 2024-05-09 | 22 | 7.5d | 0d | Programador frontend 1 | 8h | 344,000 |
| 25 | 1.4.2 | Realizar interfaz de registro de ventas |  | 1d | 2024-05-08 | 2024-05-09 | 17FF, 19 | 7.75d | 0d | Programador frontend 2 | 8h | 344,000 |
| 26 | 1.4.3 | Realizar lógica del cálculo de estadísticas |  | 0.5d | 2024-05-08 | 2024-05-08 | 17 | 8d | 0.5d | Programador backend 1 | 4h | 180,000 |
| 27 | 1.4.4 | Módulo de ventas completado | milestone | 0d | 2024-05-09 | 2024-05-09 | 26, 24, 25 | 7.5d |  |  |  |  |

| ID | WBS | Task | Type | Duration | Start | Finish | Predecessors | Total slack | Free slack | Resources | Work | Cost |
| --- | --- | --- | --- | --- | --- | --- | --- | --- | --- | --- | --- | --- |
| 28 | 1.5 | **Realización módulo de Mercado Libre** |  | 3.5d | 2024-05-08 | 2024-05-13 |  | 0d |  |  | 32h | 1,364,000 |
| 29 | 1.5.1 | Diseñar la arquitectura de la integración y de entrada y salida de datos |  | 2d | 2024-05-08 | 2024-05-09 | 20 | 0d |  | Programador backend 2 | 16h | 720,000 |
| 30 | 1.5.2 | Realizar desarrollo de interfaz de usuario de gestión de pedidos |  | 1d | 2024-05-10 | 2024-05-10 | 29 | 0d |  | Programador frontend 1 | 8h | 344,000 |
| 31 | 1.5.3 | Realizar implementación de sincronización de datos |  | 0.5d | 2024-05-10 | 2024-05-10 | 30FF | 0d |  | Programador backend 2 | 4h | 180,000 |
| 32 | 1.5.4 | Realizar pruebas de integración con Mercado Libre |  | 0.5d | 2024-05-13 | 2024-05-13 | 31 | 5.5d | 0d | Tester | 4h | 120,000 |
| 33 | 1.5.5 | Despliegue del módulo de Mercado Libre completado | milestone | 0d | 2024-05-13 | 2024-05-13 | 32 | 5.5d |  |  |  |  |
| 34 | 1.6 | **Realización del módulo de publicidad** |  | 15d | 2024-04-30 | 2024-05-20 |  | 0d |  |  | 104h | 4,280,000 |
| 35 | 1.6.1 | Desarrollar la lógica de promociones internas |  | 2d | 2024-05-13 | 2024-05-14 | 31 | 0d |  | Programador backend 2 | 16h | 720,000 |
| 36 | 1.6.2 | Desarrollar la lógica de procesamiento y extracción de las promociones recibidas |  | 2d | 2024-05-10 | 2024-05-13 | 29 | 1d |  | Programador backend 1 | 16h | 720,000 |
| 37 | 1.6.3 | Realizar la interfaz del ingreso de promociones en la base de datos |  | 1d | 2024-05-09 | 2024-05-10 | 18, 25 | 21d |  | Programador frontend 2 | 8h | 344,000 |
| 38 | 1.6.4 | Diseñar plantillas e imágenes de diferentes tipos de materiales publicitarios |  | 3d | 2024-04-30 | 2024-05-02 |  | 10.5d |  | Diseñador gráfico | 24h | 696,000 |
| 39 | 1.6.5 | Desarrollar algoritmo de generacion de contenido publicitario |  | 2.5d | 2024-05-15 | 2024-05-17 | 36, 35 | 0d |  | Programador backend 1 | 20h | 900,000 |
| 40 | 1.6.6 | Integrar el algoritmo con las plantillas de diseño de los materiales publicitarios finales. |  | 1d | 2024-05-17 | 2024-05-20 | 38, 39 | 0d |  | Programador backend 1 | 8h | 360,000 |
| 41 | 1.6.7 | Desarrollar la lógica de distribución de la publicidad en los medios seleccionados |  | 1d | 2024-05-17 | 2024-05-20 | 39 | 0d |  | Programador backend 2 | 8h | 360,000 |
| 42 | 1.6.8 | Integrar el módulo de publicidad en el sistema de información del kiosco |  | 0.5d | 2024-05-20 | 2024-05-20 | 40, 41 | 0d |  | Programador backend 1 | 4h | 180,000 |
| 43 | 1.6.9 | Módulo de publicidad integrado y funcional en el sistema de información del kiosco | milestone | 0d | 2024-05-20 | 2024-05-20 | 42, 37 | 0d |  |  |  |  |
| 44 | 1.7 | Desarrollo del Sistema de Información terminado | milestone | 0d | 2024-05-20 | 2024-05-20 | 43, 33, 27 | 0d |  |  |  |  |
| 45 | 1.8 | **Prueba del sistema** |  | 9d | 2024-05-21 | 2024-05-31 |  | 0d |  |  | 72h | 2,160,000 |
| 46 | 1.8.1 | Definir los tipos de pruebas a realizar y los criterios de aceptación |  | 1d | 2024-05-21 | 2024-05-21 | 44 | 0d |  | Tester | 8h | 240,000 |
| 47 | 1.8.2 | Redactar casos de prueba detallados de cada módulo y funcionalidad del sistema |  | 3d | 2024-05-22 | 2024-05-24 | 46 | 0d |  | Tester | 24h | 720,000 |
| 48 | 1.8.3 | Ejecutar los casos de prueba utilizando herramientas de prueba adecuadas |  | 1d | 2024-05-27 | 2024-05-27 | 47 | 0d |  | Tester | 8h | 240,000 |
| 49 | 1.8.4 | Controlar y corregir los errores |  | 2d | 2024-05-28 | 2024-05-29 | 48 | 0d |  | Tester | 16h | 480,000 |
| 50 | 1.8.5 | Documentar los resultados de las pruebas |  | 2d | 2024-05-30 | 2024-05-31 | 49 | 0d |  | Tester | 16h | 480,000 |
| 51 | 1.8.6 | Pruebas del sistema completadas y errores corregidos | milestone | 0d | 2024-05-31 | 2024-05-31 | 50 | 0d |  |  |  |  |

| ID | WBS | Task | Type | Duration | Start | Finish | Predecessors | Total slack | Free slack | Resources | Work | Cost |
| --- | --- | --- | --- | --- | --- | --- | --- | --- | --- | --- | --- | --- |
| 52 | 1.9 | **Realización de la capacitación** |  | 5.25d | 2024-06-03 | 2024-06-10 |  | 0d |  |  | 42h | 777,000 |
| 53 | 1.9.1 | Definir los objetivos de la capacitación |  | 0.25d | 2024-06-03 | 2024-06-03 | 51 | 0d |  | Capacitador | 2h | 37,000 |
| 54 | 1.9.2 | Seleccionar y elaborar el material de capacitación |  | 1d | 2024-06-03 | 2024-06-04 | 53 | 0d |  | Capacitador | 8h | 148,000 |
| 55 | 1.9.3 | Definir el cronograma de la capacitación |  | 0.5d | 2024-06-04 | 2024-06-04 | 54 | 0d |  | Capacitador | 4h | 74,000 |
| 56 | 1.9.4 | Capacitar en el uso de cada módulo del sistema (inventario, ventas, publicidad) |  | 2d | 2024-06-04 | 2024-06-06 | 55 | 0d |  | Capacitador | 16h | 296,000 |
| 57 | 1.9.5 | Practicar el uso del sistema en situaciones reales |  | 1.5d | 2024-06-06 | 2024-06-10 | 56 | 0d |  | Capacitador | 12h | 222,000 |
| 58 | 1.9.6 | Capacitación del personal en el uso del sistema de información completada | milestone | 0d | 2024-06-10 | 2024-06-10 | 57 | 0d |  |  |  |  |
| 59 | 1.10 | **Implementación del sistema** |  | 1.25d | 2024-06-03 | 2024-06-04 |  | 4d |  |  | 10h | 170,000 |
| 60 | 1.10.1 | Coordinar horario con la dueña del kiosko |  | 0.25d | 2024-06-03 | 2024-06-03 | 51 | 4d | 0d | Técnico | 2h | 34,000 |
| 61 | 1.10.2 | Realizar la instalación del software |  | 0.5d | 2024-06-03 | 2024-06-03 | 60 | 4d | 0d | Técnico | 4h | 68,000 |
| 62 | 1.10.3 | Controlar parametros |  | 0.5d | 2024-06-03 | 2024-06-04 | 61 | 4d | 0d | Técnico | 4h | 68,000 |
| 63 | 1.10.4 | Implementación satisfactoria del sistema | milestone | 0d | 2024-06-04 | 2024-06-04 | 62 | 4d |  |  |  |  |
| 64 | 1.11 | Proyecto finalizado | milestone | 0d | 2024-06-10 | 2024-06-10 | 58, 63 | 0d |  |  |  |  |
